# caGrid-1-3

Schedule from MS Project, 2008-07-17 to 2008-11-25, A marks actual dates.
Personal

## Calendars

- Standard: Mon-Fri 08:00-12:00, 13:00-17:00; Sat-Sun off.

## Resources

| Resource |
| --- |
| Scott Oster |
| Steve Langella |
| Shannon Hastings |
| David Ervin |
| Santhosh Garmilla |
| John Eisenschmidt |
| Knowledge Center |
| Carolyn Klinger |
| Quality Assurance |
| Systems |
| Manav Kher |
| Ravi Madduri |

## Schedule

| ID | WBS | Task | Type | Duration | Start | Finish | Predecessors | Complete | Remaining | Total slack | Free slack | Resources | Work | Actual work |
| --- | --- | --- | --- | --- | --- | --- | --- | --- | --- | --- | --- | --- | --- | --- |
| 1 | 1.0 | **Gold Compatibility** |  | 21d? | 2008-07-17 A | 2008-08-14 |  | 27% | 15.23d? | 73d |  |  | 509h | 114.6h |
| 2 | 1.1 | **GME Rewrite** |  | 21d? | 2008-07-17 A | 2008-08-14 |  | 48% | 10.93d? | 72d |  |  | 221h | 106h |
| 3 | 1.1.0 | Start | milestone | 0d | 2008-07-17 A | 2008-07-17 A |  | 100% |  |  |  | Scott Oster [50%] |  |  |
| 4 | 1.1.1 | MySQL 5.0 Support |  | 1d? | 2008-07-18 A | 2008-07-18 A | 3 | 100% |  |  |  | Scott Oster [50%] | 4h | 4h |
| 5 | 1.1.3 | Schemas with Cycles |  | 6.25d? | 2008-07-18 A | 2008-07-28 A | 3 | 100% |  |  |  | Scott Oster [50%] | 25h | 25h |
| 6 | 1.1.4 | Schemas with Includes/Redefines |  | 5d? | 2008-07-18 A | 2008-07-24 A | 3 | 100% |  |  |  | Scott Oster [50%] | 20h | 20h |
| 7 | 1.1.5 | URI Valid as Namespace |  | 1d? | 2008-07-18 A | 2008-07-18 A | 3 | 100% |  |  |  | Scott Oster [50%] | 4h | 4h |
| 8 | 1.1.6 | Metadata and WSDL reflect service operations |  | 1d? | 2008-07-18 A | 2008-07-18 | 3 | 50% | 0.5d? | 91d | 19d | Scott Oster [50%] | 4h | 2h |
| 9 | 1.1.7 | Update/Delete non-production schemas |  | 5d? | 2008-07-18 A | 2008-07-24 | 3 | 75% | 1.25d? | 87d | 15d | Scott Oster [50%] | 20h | 15h |
| 10 | 1.1.8 | Associate Arbitrarty Metadata or Annotations |  | 10d? | 2008-07-18 | 2008-07-31 | 3 |  |  | 82d | 10d | Scott Oster [50%] | 40h |  |
| 11 | 1.1.9 | Validate that XML conforms to schema in GME |  | 5d? | 2008-07-18 | 2008-07-24 | 3 |  |  | 87d | 15d | Scott Oster [50%] | 20h |  |
| 12 | 1.1.10 | GME has issues with mutliple elements of the same name/type in a complexType |  | 1d? | 2008-07-17 A | 2008-07-17 A | 3 | 100% |  |  |  | Scott Oster [50%] | 4h | 4h |
| 13 | 1.1.11 | Non-RFE Development |  | 20d | 2008-07-18 A | 2008-08-14 | 3 | 40% | 12d | 72d | 0d | Scott Oster [50%] | 80h | 32h |
| 14 | 1.1.12 | Finish | milestone | 0d | 2008-08-14 | 2008-08-14 | 4, 5, 6, 7, 8, 9, 10, 11, 13, 12 |  |  | 72d | 0d | Scott Oster [50%] |  |  |
| 15 | 1.2 | **caDSR Grid Service Replacement** |  | 21d? | 2008-07-17 A | 2008-08-14 |  | 4% | 20.25d? | 72d |  |  | 140h | 5h |
| 16 | 1.2.1 | Start | milestone | 0d | 2008-07-17 | 2008-07-17 |  |  |  | 72d | 0d | Scott Oster [50%] |  |  |
| 17 | 1.2.2 | Design |  | 5d? | 2008-07-18 A | 2008-07-24 | 16 | 25% | 3.75d? | 87d | 15d | Scott Oster [50%] | 20h | 5h |
| 18 | 1.2.3 | Development |  | 20d? | 2008-07-18 | 2008-08-14 | 16 |  |  | 72d | 0d | Scott Oster [50%] | 80h |  |
| 19 | 1.2.4 | Migration of code depenedencies on caDSR grid service (Introduce extensions) |  | 5d? | 2008-07-18 | 2008-07-24 | 16 |  |  | 87d | 15d | Scott Oster [50%] | 20h |  |
| 20 | 1.2.4 | Developer Testing |  | 5d? | 2008-07-18 | 2008-07-24 | 16 |  |  | 87d | 15d | Scott Oster [50%] | 20h |  |
| 21 | 1.2.5 | Finish | milestone | 0d | 2008-08-14 | 2008-08-14 | 17, 18, 20, 19 |  |  | 72d | 0d | Scott Oster [50%] |  |  |
| 22 | 1.3 | **Make Core Services Gold Compatible** |  | 5d? | 2008-07-17 A | 2008-07-23 |  | 6% | 4.68d? | 89d |  |  | 148h | 3.6h |
| 23 | 1.3.1 | Start | milestone | 0d | 2008-07-17 | 2008-07-17 |  |  |  | 89d | 0d |  |  |  |
| 24 | 1.3.2 | Identify Services to be made Gold Compatible |  | 1d? | 2008-07-18 A | 2008-07-18 | 23 | 90% | 0.1d? | 92d | 3d | Scott Oster [50%] | 4h | 3.6h |

Notes:
- 19: This creates a backwards incompatibility for existing Introduce installations which would expect to be able to communicate with the existing caDSR grid service; we should leave this instance running, and deprecate it (if ncessary, we can create new versions of these extensions for past releases of Introduce if necessary.
- 22: caGrid 1.3 should focus on non-backwards compatibility issues (not refactoring service interfaces); I will create a detailed wbs for this sepecifically

| ID | WBS | Task | Type | Duration | Start | Finish | Predecessors | Complete | Remaining | Total slack | Free slack | Constraint | Resources | Work | Actual work |
| --- | --- | --- | --- | --- | --- | --- | --- | --- | --- | --- | --- | --- | --- | --- | --- |
| 25 | 1.3.3 | **Register Object and Metadata Models** |  | 5d | 2008-07-17 | 2008-07-23 |  |  |  | 89d |  |  | John Eisenschmidt | 144h |  |
| 26 | 1.3.3.1 | Start | milestone | 0d | 2008-07-17 | 2008-07-17 | 23 |  |  | 72.36d | 0d |  | John Eisenschmidt |  |  |
| 27 | 1.3.3.2 | CQL |  | 5d | 2008-07-17 | 2008-07-23 | 26 |  |  | 72.36d | 0d |  | John Eisenschmidt | 40h |  |
| 28 | 1.3.3.3 | CQL Results |  | 2d | 2008-07-17 | 2008-07-18 | 26 |  |  | 75.36d | 3d |  | John Eisenschmidt | 16h |  |
| 29 | 1.3.3.4 | Service Metadata |  | 2d | 2008-07-17 | 2008-07-18 | 26 |  |  | 75.36d | 3d |  | John Eisenschmidt | 16h |  |
| 30 | 1.3.3.5 | Security Metadata |  | 2d | 2008-07-17 | 2008-07-18 | 26 |  |  | 75.36d | 3d |  | John Eisenschmidt | 16h |  |
| 31 | 1.3.3.6 | Data Services Object Model |  | 2d | 2008-07-17 | 2008-07-18 | 26 |  |  | 75.36d | 3d |  | John Eisenschmidt | 16h |  |
| 32 | 1.3.3.7 | Finish | milestone | 0d | 2008-07-23 | 2008-07-23 | 27, 28, 29, 30, 31 |  |  | 72.36d | 0d |  | John Eisenschmidt |  |  |
| 33 | 1.3.4 | Finish | milestone | 0d | 2008-07-23 | 2008-07-23 | 24, 32 |  |  | 89d |  |  |  |  |  |
| 34 | 2.0 | **caCORE Integration** |  | 15d | 2008-07-17 A | 2008-08-06 |  |  | 15d | 79d |  |  |  | 492h |  |
| 35 | 2.1 | Start | milestone | 0d | 2008-07-17 A | 2008-07-17 A |  | 100% |  |  |  |  |  |  |  |
| 36 | 2.2 | Implementation of Common Testing between Grid and SDK |  | 15d | 2008-07-17 | 2008-08-06 | 35 |  |  | 79d | 0d |  | David Ervin | 120h |  |
| 37 | 2.3 | Identify modeling gaps/requirements for the analytical/data service |  | 10d | 2008-07-17 | 2008-07-30 | 35 |  |  | 84d | 5d |  | David Ervin | 80h |  |
| 38 | 2.4 | CQL/CQL2 Integration in SDK |  | 15d | 2008-07-17 | 2008-08-06 | 35 |  |  | 79d | 0d |  | David Ervin | 120h |  |
| 39 | 2.5 | Data Service plug-in for SDK 4.1 |  | 10d | 2008-07-17 | 2008-07-30 | 35 |  |  | 84d | 5d |  | David Ervin | 80h |  |
| 40 | 2.6 | Introduce upgrade to SDK 4.1 |  | 5d | 2008-07-17 | 2008-07-23 | 35 |  |  | 89d | 10d |  | Scott Oster [50%] | 20h |  |
| 41 | 2.7 | Proxy Framework and XML serialization integration in Grid Service |  | 5d | 2008-07-17 | 2008-07-23 | 35 |  |  | 89d | 10d |  | Shannon Hastings | 40h |  |
| 42 | 2.8 | XMI Reader API Integration in Introduce |  | 5d | 2008-07-17 | 2008-07-23 | 35 |  |  | 89d | 10d |  | David Ervin [80%] | 32h |  |
| 43 | 2.9 | Finish | milestone | 0d | 2008-08-06 | 2008-08-06 | 36, 37, 38, 39, 40, 41, 42 |  |  | 79d |  |  |  |  |  |
| 44 | 3.0 | **Bug Fixes** |  | 41d? | 2008-07-17 A | 2008-09-11 |  | 38% | 25.44d? | 53d |  |  |  | 248.8h | 96h |
| 45 | 3.1 | Start | milestone | 0d | 2008-07-17 A | 2008-07-17 A |  | 100% |  |  |  |  |  |  |  |
| 46 | 3.2 | SDK 4 data service wizard fails with 'No Domain Model' |  | 1d | 2008-09-05 A | 2008-09-05 A | 45 | 100% |  |  |  | start no earlier than 2008-09-05 | David Ervin | 8h | 8h |
| 47 | 3.3 | When the trasfer resource is being destroyed it tries to delete the cache file. If the cache files does not exist it throws a resource exception. |  | 1d? | 2008-07-17 A | 2008-07-17 A | 45 | 100% |  |  |  |  | Shannon Hastings | 8h | 8h |
| 48 | 3.4 | 2 >= 2 error in GridGrouper my groups |  | 1d? | 2008-07-17 | 2008-07-17 | 45 |  |  | 93d | 40d |  | Steve Langella | 8h |  |
| 49 | 3.5 | Introduce is not passing any system properties on to it's ant calls it makes when running the engine. |  | 1d? | 2008-07-17 | 2008-07-17 | 45 |  |  | 93d | 40d |  | Shannon Hastings | 8h |  |
| 50 | 3.6 | caDSR Grid Service API does not provide access to semantic metadata (concept codes) |  | 2d? | 2008-07-18 | 2008-07-21 | 45 |  |  | 91d | 38d |  | Scott Oster [50%] | 8h |  |
| 51 | 3.7 | Security Service Metadata Anonymous Clients Ignored in Grid Grouper |  | 1d? | 2008-07-17 | 2008-07-17 | 45 |  |  | 93d | 40d |  | Steve Langella | 8h |  |
| 52 | 3.8 | caCORE backed data services don't handle queries with single quotes in query parameters |  | 1d? | 2008-07-17 A | 2008-07-17 A | 45 | 100% |  |  |  |  | David Ervin | 8h | 8h |
| 53 | 3.9 | caDSR Type Browser doesn't let you correct a namespace that is invalid (as opposed to not found) |  | 4d? | 2008-07-18 | 2008-07-23 | 45 |  |  | 89d | 36d |  | Scott Oster [50%] | 16h |  |
| 54 | 3.10 | DataService gets in inconsistent state and returns confusing errors when not properly initialized |  | 1d? | 2008-07-17 | 2008-07-17 | 45 |  |  | 93d | 40d |  | David Ervin | 8h |  |
| 55 | 3.11 | Grid Grouper Authorization not configured but service can be deployed |  | 1d? | 2008-07-17 | 2008-07-17 | 45 |  |  | 93d | 40d |  | Steve Langella | 8h |  |
| 56 | 3.12 | Introduce error importing Type schemas it generated. |  | 1d? | 2008-09-04 A | 2008-09-04 A | 45 | 100% |  |  |  | finish no earlier than 2008-09-04 | Shannon Hastings | 8h | 8h |
| 57 | 3.13 | GTS does not remove permissions when a CA is deleted. |  | 1d? | 2008-07-17 | 2008-07-17 | 45 |  |  | 93d | 40d |  | Steve Langella | 8h |  |
| 58 | 3.14 | Spaces in GLOBUS_LOCATION causing errors on deployment for Introduce created services |  | 1d? | 2008-07-17 | 2008-07-17 | 45 |  |  | 93d | 40d |  | Shannon Hastings | 8h |  |
| 59 | 3.15 | When importing a method from another introduce service package names are broken |  | 1d | 2008-09-04 A | 2008-09-04 A | 45 | 100% |  |  |  |  | Shannon Hastings | 8h | 8h |
| 60 | 3.16 | SyncGTS is an Introduce 1.1 service will conflict with a container running newer services. |  | 1d? | 2008-07-17 | 2008-07-17 | 45 |  |  | 93d | 40d |  | Steve Langella | 8h |  |
| 61 | 3.17 | Lowercase chars in complexType names from schema can cause compile failure |  | 1.25d? | 2008-07-17 | 2008-07-18 | 45 |  |  | 92.75d | 39.75d |  | David Ervin [80%] | 8h |  |
| 62 | 3.18 | caGrid authentication service authentications fail after change of password on NCI LDAP |  | 1d? | 2008-07-17 A | 2008-07-17 A | 45 | 100% |  |  |  |  | Steve Langella | 8h | 8h |
| 63 | 3.19 | SyncGTS is using log4j directly instead of commons logging which causes some logging statements to not be shown in Tomcat |  | 1d? | 2008-07-17 | 2008-07-17 | 45 |  |  | 93d | 40d |  | Steve Langella | 8h |  |
| 64 | 3.20 | Remove references to log4j in projects and only use commons logging |  | 2d? | 2008-07-17 | 2008-07-18 | 45 |  |  | 92d | 39d |  | Steve Langella; Scott Oster [50%]; Shannon Hastings; David Ervin | 28h |  |
| 65 | 3.21 | Multiple services using WS-Enumeration cannot run in same container |  | 1d? | 2008-07-17 | 2008-07-17 | 45 |  |  | 93d | 40d |  | David Ervin [80%] | 6.4h |  |
| 66 | 3.22 | Introduce configure types validator lets you save when there are validation errors |  | 1d | 2008-09-04 A | 2008-09-04 A | 45 | 100% |  |  |  |  | Shannon Hastings | 8h | 8h |
| 67 | 3.23 | Subject in Dorian limited to 255 characters |  | 1d? | 2008-07-17 | 2008-07-17 | 45 |  |  | 93d | 40d |  | Steve Langella | 8h |  |
| 68 | 3.24 | Introduce Log Viewer hangs in certain scenarios |  | 1d? | 2008-07-17 A | 2008-07-17 A | 45 | 100% |  |  |  |  | Shannon Hastings | 8h | 8h |
| 69 | 3.25 | Gaards UI throws an error popup that makes the UI unusable |  | 1d? | 2008-07-18 | 2008-07-18 | 45 |  |  | 92d | 39d |  | Steve Langella [80%] | 6.4h |  |
| 70 | 3.26 | SDK 4 Data Service wizard can blank copied schema files |  | 1d | 2008-09-04 A | 2008-09-04 A | 45 | 100% |  |  |  | finish no earlier than 2008-09-04 | David Ervin [80%] | 6.4h | 6.4h |
| 71 | 3.27 | A deployed service in a different context (not caGrid) cannot create TransferServiceContext |  | 1d | 2008-07-17 A | 2008-07-17 A | 45 | 100% |  |  |  |  | Shannon Hastings [80%] | 6.4h | 6.4h |
| 72 | 3.28 | Pasting values in to fields on SDK 4 wizard configuration causes exception |  | 1d | 2008-09-08 A | 2008-09-08 A | 45 | 100% |  |  |  | start no earlier than 2008-09-08 | David Ervin [80%] | 6.4h | 6.4h |
| 73 | 3.29 | Introduce service security metadata is not consistent with security descriptor for resource property operations |  | 1d | 2008-09-10 A | 2008-09-10 A | 45 | 100% |  |  |  | start no earlier than 2008-09-10 | Shannon Hastings [80%] | 6.4h | 6.4h |
| 74 | 3.30 | Enter key on dorian login window is not mapped to the login button |  | 1d | 2008-09-11 A | 2008-09-11 A | 45 | 100% |  |  |  |  | Steve Langella [80%] | 6.4h | 6.4h |
| 75 | 3.31 | Finish | milestone | 0d | 2008-09-11 | 2008-09-11 | 46, 47, 48, 49, 50, 51, 52, 53, 54, 55, 56, 57, 58, 59, 60, 61, 62, 63, 64, 65, 66, 67, 68, 69, 70, 71, 72, 74, 73 |  |  | 53d |  |  |  |  |  |

Notes:
- 41: This is a low priority and we might want to bump it
- 50: This is really a "missing feature" and should/would be satisfied be the new caDSR grid service / This is already referenced above in 1.2.2, just pointing it out explicitly.
- 52: I updated the tracker; this is a limitation which can't be fixed for caCORE SDK 3.1 and 3.2(.1), but was addressed in caGrid 1.2 when adding support for caCORE SDK 4.0. Should we close the bug?
- 56: Won't Fix
- 61: This is something we can't fix; should we close the bug?
- 71: Won't Fix

| ID | WBS | Task | Type | Duration | Start | Finish | Predecessors | Complete | Remaining | Total slack | Free slack | Resources | Work | Actual work |
| --- | --- | --- | --- | --- | --- | --- | --- | --- | --- | --- | --- | --- | --- | --- |
| 76 | 4.0 | **WebSSO** |  | 2d? | 2008-07-17 A | 2008-07-18 |  | 67% | 0.67d? | 91d |  |  | 48h | 32h |
| 77 | 4.1 | Start | milestone | 0d | 2008-07-17 A | 2008-07-17 A |  | 100% |  |  |  |  |  |  |
| 78 | 4.2 | Properties not set for service redirect/cookie age within the cas-servlet.xml file |  | 1d? | 2008-07-17 A | 2008-07-17 A | 77 | 100% |  |  |  | Santhosh Garmilla [50%] | 4h | 4h |
| 79 | 4.3 | CaGridWebSSOAttributeLoaderFilter will not work as designed |  | 1d? | 2008-07-17 A | 2008-07-17 A | 77 | 100% |  |  |  | Santhosh Garmilla [50%] | 4h | 4h |
| 80 | 4.4 | WebSSO project is missing jar dependencies for syncGTS |  | 1d? | 2008-07-17 A | 2008-07-17 A | 77 | 100% |  |  |  | Santhosh Garmilla [50%] | 4h | 4h |
| 81 | 4.5 | classnotfoundexception when deploying to tomcat 5.5+ |  | 1d? | 2008-07-17 A | 2008-07-17 A | 77 | 100% |  |  |  | Santhosh Garmilla [50%] | 4h | 4h |
| 82 | 4.6 | Update Build Process |  | 1d? | 2008-07-18 A | 2008-07-18 A | 77 | 100% |  |  |  | Santhosh Garmilla [50%] | 4h | 4h |
| 83 | 4.7 | Update the Sample Application |  | 1d? | 2008-07-17 A | 2008-07-17 A | 77 | 100% |  |  |  | Santhosh Garmilla [50%] | 4h | 4h |
| 84 | 4.8 | Create an Installer |  | 1d? | 2008-07-17 | 2008-07-17 | 77 |  |  | 92d | 1d | Santhosh Garmilla [50%] | 4h |  |
| 85 | 4.9 | Author System Tests for WebSSO |  | 1d? | 2008-07-17 | 2008-07-17 | 77 |  |  | 92d | 1d | Santhosh Garmilla [50%] | 4h |  |
| 86 | 4.10 | Acegi client |  | 1d? | 2008-07-17 A | 2008-07-17 A | 77 | 100% |  |  |  | Santhosh Garmilla [50%] | 4h | 4h |
| 87 | 4.11 | Single sign-out |  | 1d? | 2008-07-17 A | 2008-07-17 A | 77 | 100% |  |  |  | Santhosh Garmilla [50%] | 4h | 4h |
| 88 | 4.12 | Support out-of-box integration with Liferay (caGrid Portal 2.x) |  | 1d? | 2008-07-17 | 2008-07-17 | 77 |  |  | 92d | 1d | Santhosh Garmilla [50%] | 4h |  |
| 89 | 4.13 | Enhance existing documentation |  | 1d? | 2008-07-17 | 2008-07-17 | 77 |  |  | 92d | 1d | Santhosh Garmilla [50%] | 4h |  |
| 90 | 4.14 | Finish | milestone | 0d | 2008-07-18 | 2008-07-18 | 79, 80, 81, 82, 83, 84, 85, 86, 87, 88, 89, 78 |  |  | 91d | 0d |  |  |  |
| 91 | 5.0 | **Continuous Innovation** |  | 6d? | 2008-07-17 A | 2008-07-24 |  | 10% | 5.43d? | 88d |  |  | 56h | 8h |
| 92 | 5.1 | Start | milestone | 0d | 2008-07-17 A | 2008-07-17 A |  | 100% |  |  |  |  |  |  |
| 93 | 5.3 | Support common technology stack for caGrid infrastructure |  | 1d? | 2008-07-17 A | 2008-07-17 A | 92 | 100% |  |  |  | Knowledge Center | 8h | 8h |
| 94 | 5.3 | **Update installer** |  | 6d? | 2008-07-17 | 2008-07-24 |  |  |  | 88d |  |  | 40h |  |
| 95 | 5.3.1 | integrate latest portal release |  | 2d? | 2008-07-17 | 2008-07-18 |  |  |  | 92d |  | Manav Kher | 16h |  |
| 96 | 5.3.2 | integrate WF client release? |  | 0.5d? | 2008-07-17 | 2008-07-17 |  |  |  | 93.5d |  | Ravi Madduri | 4h |  |
| 97 | 5.3.3 | updates for tech stack (tomcat versions, etc) |  | 5d? | 2008-07-18 | 2008-07-24 |  |  |  | 88d |  | Scott Oster [50%] | 20h |  |
| 98 | 5.4 | Remove old EVS grid service |  | 1d? | 2008-07-18 | 2008-07-18 | 92 |  |  | 92d | 0d | Scott Oster [50%] | 4h |  |
| 99 | 5.5 | Remove old caDSR grid service |  | 1d? | 2008-07-18 | 2008-07-18 | 92 |  |  | 92d | 0d | Scott Oster [50%] | 4h |  |
| 100 | 5.6 | Finish | milestone | 0d | 2008-07-18 | 2008-07-18 | 93, 99, 98 |  |  | 92d |  |  |  |  |

Notes:
- 84: We should discuss the scope of this.

| ID | WBS | Task | Type | Duration | Start | Finish | Predecessors | Complete | Remaining | Total slack | Free slack | Constraint | Resources | Work | Actual work |
| --- | --- | --- | --- | --- | --- | --- | --- | --- | --- | --- | --- | --- | --- | --- | --- |
| 101 | 6.0 | **Data Services** |  | 66d | 2008-07-17 A | 2008-10-16 |  | 25% | 49.24d | 27d |  |  |  | 403.2h | 102.4h |
| 102 | 6.1 | Start | milestone | 0d | 2008-07-17 A | 2008-07-17 A |  | 100% |  |  |  |  |  |  |  |
| 103 | 6.2 | CQL/CQL2 Integration in SDK |  | 15d | 2008-07-17 | 2008-08-06 | 102 |  |  | 78d | 51d |  | David Ervin [80%] | 96h |  |
| 104 | 6.3 | FQP should support delegation |  | 5d | 2008-07-17 | 2008-07-23 | 102 |  |  | 88d | 61d |  | David Ervin [80%] | 32h |  |
| 105 | 6.4 | FQP should support ws-enumeration transfer of results |  | 10d | 2008-09-26 A | 2008-10-09 A | 102 | 100% |  |  |  | finish no earlier than 2008-10-09 | David Ervin [80%] | 64h | 64h |
| 106 | 6.5 | FQP should support ws-notification |  | 5d | 2008-07-17 | 2008-07-23 | 102 |  |  | 88d | 61d |  | David Ervin [80%] | 32h |  |
| 107 | 6.6 | FQP should support caGrid Transfer of results |  | 6d | 2008-10-09 A | 2008-10-16 A | 102 | 100% |  |  |  | start no earlier than 2008-10-09 | David Ervin [80%] | 38.4h | 38.4h |
| 108 | 6.7 | DCQL fails when some target services are down |  | 5d | 2008-07-17 | 2008-07-23 | 102 |  |  | 88d | 61d |  | David Ervin [80%] | 32h |  |
| 109 | 6.8 | DCQL (FQP) should support query modifiers |  | 10d | 2008-07-17 | 2008-07-30 | 102 |  |  | 83d | 56d |  | David Ervin [80%] | 64h |  |
| 110 | 6.9 | Add additional utilities for working with query results |  | 5d | 2008-07-17 | 2008-07-23 | 102 |  |  | 88d | 61d |  | David Ervin [80%] | 32h |  |
| 111 | 6.10 | silent exceptions (no service properties from custom query processor) when adding a custom query processor using Introduce data extension |  | 2d | 2008-07-17 | 2008-07-18 | 102 |  |  | 91d | 64d |  | David Ervin [80%] | 12.8h |  |
| 112 | 6.11 | Finish | milestone | 0d | 2008-10-16 | 2008-10-16 | 103, 104, 105, 106, 109, 110, 111, 108, 107 |  |  | 27d | 0d |  |  |  |  |
| 113 | 7.0 | **Introduce** |  | 67d? | 2008-07-17 A | 2008-10-17 |  | 70% | 20.36d? | 22d |  |  |  | 602.4h | 442.4h |
| 114 | 7.1 | Start | milestone | 0d | 2008-07-17 A | 2008-07-17 A |  | 100% |  |  |  |  |  |  |  |
| 115 | 7.2 | Refactor Introduce Security |  | 10d | 2008-07-17 A | 2008-07-30 A | 114 | 100% |  |  |  |  | Shannon Hastings [80%] | 64h | 64h |
| 116 | 7.3 | Grid Grouper Introduce Authorization Extension |  | 10d | 2008-07-31 A | 2008-08-13 A | 114, 115 | 100% |  |  |  |  | Shannon Hastings [80%] | 64h | 64h |
| 117 | 7.4 | CSM Introduce Authorization Extension |  | 10d | 2008-07-31 A | 2008-08-13 A | 114, 115 | 100% |  |  |  |  | Shannon Hastings [80%] | 64h | 64h |
| 118 | 7.5 | ivy support for introduce-created projects |  | 16d | 2008-07-17 | 2008-08-07 | 114 |  |  | 56d | 50d |  | Scott Oster [50%] | 64h |  |
| 119 | 7.6 | Need a way to hook in pre-deployment validation checks to enforce policy |  | 10d | 2008-07-17 | 2008-07-30 | 114 |  |  | 62d | 56d |  | Shannon Hastings [80%] | 64h |  |
| 120 | 7.7 | Change the way schemas are loaded and resolved by introduce. |  | 1d? | 2008-07-17 | 2008-07-17 | 114 |  |  | 71d | 65d |  | Shannon Hastings [80%] | 6.4h |  |
| 121 | 7.8 | Introduce extension for creating cagrid core services |  | 1d? | 2008-07-17 | 2008-07-17 | 114 |  |  | 71d | 65d |  | Shannon Hastings [80%] | 6.4h |  |
| 122 | 7.9 | Introduce Software Update needs re-engineered |  | 1d? | 2008-07-17 | 2008-07-17 | 114 |  |  | 71d | 65d |  | Shannon Hastings [80%] | 6.4h |  |
| 123 | 7.10 | Improve Introduce usability when adding extensions or service contexts |  | 4d | 2008-07-17 A | 2008-07-22 A | 114 | 100% |  |  |  |  | Shannon Hastings [80%] | 25.6h | 25.6h |
| 124 | 7.11 | Introduce services which support persistence are hard to customize persistence on the resource itself |  | 10d | 2008-09-26 A | 2008-10-09 A | 114 | 100% |  |  |  | start no earlier than 2008-09-26 | Shannon Hastings [80%] | 64h | 64h |
| 125 | 7.12 | Introduce client code should be more override friendly |  | 10d | 2008-09-16 A | 2008-09-29 A | 114 | 100% |  |  |  |  | Shannon Hastings [80%] | 64h | 64h |
| 126 | 7.13 | Introduce clients do not set user credential when returning client handle to stateful resources |  | 5d | 2008-09-05 A | 2008-09-11 A | 114 | 100% |  |  |  |  | Shannon Hastings [80%] | 32h | 32h |
| 127 | 7.14 | Introduce Service tab should use tooltips in the jtree |  | 5d | 2008-07-17 A | 2008-07-23 A | 114 | 100% |  |  |  |  | Shannon Hastings [80%] | 32h | 32h |
| 128 | 7.15 | Problem with Anonymous Security Setting |  | 1d? | 2008-09-15 A | 2008-09-15 A | 114 | 100% |  |  |  |  | Shannon Hastings [80%] | 6.4h | 6.4h |
| 129 | 7.16 | Review Advertisement settings |  | 5d? | 2008-09-21 A | 2008-09-26 A | 114 | 100% |  |  |  | finish no earlier than 2008-09-15 | Scott Oster [50%] | 20h | 20h |
| 130 | 7.17 | ServiceConstants file shouldn't get completely re-written every save |  | 1d | 2008-10-16 A | 2008-10-16 A | 114 | 100% |  |  |  | start no earlier than 2008-10-16 | Shannon Hastings [80%] | 6.4h | 6.4h |
| 131 | 7.18 | Introduce Feature Freeze (milestone) | milestone | 0d | 2008-10-16 | 2008-10-16 | 115, 116, 117, 118, 119, 120, 121, 122, 123, 124, 125, 126, 127, 128, 130, 129 |  |  | 6d | 0d |  | Shannon Hastings [80%] |  |  |
| 132 | 7.19 | Introduce Upgraders (1.1->1.3) |  | 1d? | 2008-10-17 | 2008-10-17 | 131 |  |  | 22d | 0d |  | Shannon Hastings [80%] | 6.4h |  |
| 133 | 7.20 | Introduce Upgraders (1.2->1.3) |  | 1d? | 2008-10-17 | 2008-10-17 | 131 |  |  | 22d | 0d |  | Shannon Hastings [80%] | 6.4h |  |
| 134 | 7.21 | Finish | milestone | 0d | 2008-10-17 | 2008-10-17 | 132, 133 |  |  | 22d | 0d |  |  |  |  |

Notes:
- 109: We should hold off on this until CQL2 (and therefore DCQL2) are rolled out, as this requires a language change and would affect backwards compatibility
- 118: This is of limitied utility without 5.5; which likely won't be done in 1.3 timeline

| ID | WBS | Task | Type | Duration | Start | Finish | Predecessors | Complete | Remaining | Total slack | Free slack | Constraint | Resources | Work | Actual work |
| --- | --- | --- | --- | --- | --- | --- | --- | --- | --- | --- | --- | --- | --- | --- | --- |
| 135 | 8.0 | **Security** |  | 93d | 2008-07-17 A | 2008-11-24 |  | 24% | 70.41d | 0d |  |  |  | 448h | 108.8h |
| 136 | 8.1 | Start | milestone | 0d | 2008-07-17 A | 2008-07-17 A |  | 100% |  |  |  |  |  |  |  |
| 137 | 8.2 | Support multiple authentication profile |  | 5d | 2008-10-06 A | 2008-10-10 A | 136 | 100% |  |  |  |  | Steve Langella [80%] | 32h | 32h |
| 138 | 8.3 | Authentication Profile Service Metadata |  | 2d | 2008-10-13 A | 2008-10-14 A | 136 | 100% |  |  |  |  | Steve Langella [80%] | 12.8h | 12.8h |
| 139 | 8.4 | Update GAARDS UI to leverage new Authentication Profile / Trusted IdP metadata |  | 1d | 2008-07-18 | 2008-07-18 | 136 |  |  | 91d |  |  | Steve Langella [80%] | 6.4h |  |
| 140 | 8.5 | Develop system integration tests for the Authentication Service |  | 3d | 2008-10-15 A | 2008-10-17 A | 136 | 100% |  |  |  |  | Steve Langella [80%] | 19.2h | 19.2h |
| 141 | 8.6 | Develop system integration tests for the GTS |  | 10d | 2008-10-20 | 2008-10-31 | 140 |  |  | 15d | 0d |  | Steve Langella [80%] | 64h |  |
| 142 | 8.7 | SyncGTS needs to use service property for sync description |  | 1d | 2008-11-03 | 2008-11-03 | 141 |  |  | 15d |  |  | Steve Langella [80%] | 6.4h |  |
| 143 | 8.8 | API to discover trusted IDs (Use case for caB2B security requirements) |  | 2d | 2008-11-04 A | 2008-11-05 A | 142 | 100% |  |  |  |  | Steve Langella [80%] | 12.8h | 12.8h |
| 144 | 8.9 | Service Security Client needs a way to say to always use credential |  | 1d | 2008-11-06 | 2008-11-06 | 143 |  |  | 9d | 0d | start no earlier than 2008-10-08 | Shannon Hastings [80%] | 6.4h |  |
| 145 | 8.10 | Spring enable Dorian |  | 3d | 2008-11-07 | 2008-11-11 | 144 |  |  | 9d |  |  | Steve Langella [80%] | 19.2h |  |
| 146 | 8.11 | Implement new Authentication Service interface |  | 5d | 2008-11-12 A | 2008-11-18 A | 145 | 100% |  |  |  |  | Steve Langella [80%] | 32h | 32h |
| 147 | 8.12 | Add Authentication Profile Metadata to Dorian. |  | 1d | 2008-11-19 | 2008-11-19 | 146 |  |  | 0d |  |  | Steve Langella [80%] | 6.4h |  |
| 148 | 8.13 | Extend Trusted Identity Provider information to include information regarding the IdP's Authentication Service |  | 2d | 2008-11-20 | 2008-11-21 | 147 |  |  | 0d |  |  | Steve Langella [80%] | 12.8h |  |
| 149 | 8.14 | Add Trusted IdP metadata to Dorian |  | 1d | 2008-11-24 | 2008-11-24 | 148 |  |  | 0d |  |  | Steve Langella [80%] | 6.4h |  |
| 150 | 8.15 | Move from issuing Proxy Certificates to Issuing short term certificates. |  | 10d | 2008-07-18 | 2008-07-31 | 136 |  |  | 82d |  |  | Steve Langella [80%] | 64h |  |
| 151 | 8.16 | Enable Dorian Host Certificates to work with new version of IE and Firefox |  | 3d | 2008-07-18 | 2008-07-22 | 136 |  |  | 89d |  |  | Steve Langella [80%] | 19.2h |  |
| 152 | 8.17 | Add Account Audting to Dorian |  | 10d | 2008-07-18 | 2008-07-31 | 136 |  |  | 82d |  |  | Steve Langella [80%] | 64h |  |
| 153 | 8.18 | Reformat GAARDS UI to display properly on the MAC |  | 10d | 2008-07-18 | 2008-07-31 | 136 |  |  | 82d |  |  | Steve Langella [80%] | 64h |  |
| 154 | 8.19 | Finish | milestone | 0d | 2008-11-24 | 2008-11-24 | 137, 138, 139, 140, 141, 142, 143, 144, 145, 146, 147, 148, 149, 150, 151, 152, 153 |  |  | 0d |  |  |  |  |  |
| 155 | 9.0 | **Incubation** |  | 1d? | 2008-07-17 | 2008-07-17 |  |  |  | 93d |  |  |  | 6.4h |  |
| 156 | 9.1 | Start | milestone | 0d | 2008-07-17 | 2008-07-17 |  |  |  | 93d | 0d |  |  |  |  |
| 157 | 9.2 | WSRF.NET (support) |  | 1d? | 2008-07-17 | 2008-07-17 | 156 |  |  | 93d | 0d |  | Shannon Hastings [80%] | 6.4h |  |
| 158 | 9.0 | FInish | milestone | 0d | 2008-07-17 | 2008-07-17 | 157 |  |  | 93d |  |  |  |  |  |

| ID | WBS | Task | Type | Duration | Start | Finish | Predecessors | Total slack | Free slack | Resources | Work |
| --- | --- | --- | --- | --- | --- | --- | --- | --- | --- | --- | --- |
| 159 | 10.0 | **Documentation** |  | 4.64d? | 2008-07-17 | 2008-07-23 |  | 89.36d |  |  | 106.4h |
| 160 | 10.1 | Start | milestone | 0d | 2008-07-17 | 2008-07-17 |  | 89.36d | 0d |  |  |
| 161 | 10.2 | Update Administrator Guide |  | 2.5d? | 2008-07-17 | 2008-07-21 | 160 | 91.5d | 2.14d | Carolyn Klinger | 20h |
| 162 | 10.3 | Update Install Guide |  | 0.51d? | 2008-07-17 | 2008-07-18 | 160 | 92.74d | 3.38d | Carolyn Klinger; Steve Langella [80%]; Scott Oster [50%]; Shannon Hastings [80%]; David Ervin [80%] | 8h |
| 163 | 10.4 | Update User Guide |  | 1.28d? | 2008-07-17 | 2008-07-18 | 160 | 89.36d | 0d | Carolyn Klinger; David Ervin [80%]; Scott Oster [50%]; Shannon Hastings [80%]; Steve Langella [80%] | 20h |
| 164 | 10.5 | Update design documents |  | 1d? | 2008-07-18 | 2008-07-21 | 163 | 89.36d | 0d | Scott Oster [50%]; Steve Langella [80%]; Shannon Hastings [80%]; David Ervin [80%] | 23.2h |
| 165 | 10.6 | Update caGrid overview |  | 1d? | 2008-07-21 | 2008-07-22 | 164 | 89.36d | 0d | Scott Oster [50%]; John Eisenschmidt | 12h |
| 166 | 10.7 | Update wiki |  | 1d? | 2008-07-22 | 2008-07-23 | 165 | 89.36d | 0d | Scott Oster [50%]; Steve Langella [80%]; Shannon Hastings [80%]; David Ervin [80%] | 23.2h |
| 167 | 10.8 | Finish | milestone | 0d | 2008-07-23 | 2008-07-23 | 161, 162, 166 | 89.36d |  |  |  |
| 168 | 11.0 | **Quality Assurance** |  | 94d? | 2008-07-17 | 2008-11-25 |  | 0d |  |  | 256h |
| 169 | 11.1 | Start | milestone | 0d | 2008-07-17 | 2008-07-17 |  | 73d | 0d |  |  |
| 170 | 11.2 | Test GME |  | 1d? | 2008-08-15 | 2008-08-15 | 169, 14 | 72d |  | Quality Assurance | 8h |
| 171 | 11.3 | Test caDSR Replacement |  | 1d? | 2008-08-15 | 2008-08-15 | 169, 21 | 72d |  | Quality Assurance | 8h |
| 172 | 11.4 | Test WebSSO |  | 1d? | 2008-07-21 | 2008-07-21 | 169, 90 | 91d |  | Quality Assurance | 8h |
| 173 | 11.5 | Test release on new tech stack |  | 1d? | 2008-07-17 | 2008-07-17 | 169 | 93d |  | Quality Assurance | 8h |
| 174 | 11.6 | Test Introduce |  | 5d | 2008-10-20 | 2008-10-24 | 169, 134 | 22d |  | Quality Assurance | 40h |
| 175 | 11.7 | Test Security |  | 1d? | 2008-11-25 | 2008-11-25 | 169, 154 | 0d |  | Quality Assurance | 8h |
| 176 | 11.8 | Test Data Services |  | 1d? | 2008-10-17 | 2008-10-17 | 169, 112 | 27d |  | Quality Assurance | 8h |
| 177 | 11.9 | Test caGrid 1.3 Grid Services |  | 20d | 2008-10-20 | 2008-11-14 | 169, 191 | 6d | 0d | Quality Assurance | 160h |
| 178 | 11.10 | Test QA integration scenarios |  | 1d? | 2008-11-17 | 2008-11-17 | 177 | 6d | 0d | Quality Assurance | 8h |
| 179 | 11.11 | Finish | milestone | 0d | 2008-11-17 | 2008-11-17 | 178 | 6d |  | Quality Assurance |  |
| 180 | 12.0 | **Deployment** |  | 77.5d? | 2008-07-17 | 2008-11-03 |  | 16.5d |  |  | 242.4h |
| 181 | 12.1 | Start | milestone | 0d | 2008-07-17 | 2008-07-17 |  | 82.5d | 0d |  |  |
| 182 | 12.2 | Create release notes |  | 1d? | 2008-07-18 | 2008-07-18 | 181 | 90d | 0d | Scott Oster [50%] | 4h |
| 183 | 12.3 | Create 1.3 target_grid configurations |  | 2d? | 2008-07-21 | 2008-07-22 | 182 | 90d |  | Scott Oster [50%] | 8h |

| ID | WBS | Task | Type | Duration | Start | Finish | Predecessors | Total slack | Free slack | Resources | Work |
| --- | --- | --- | --- | --- | --- | --- | --- | --- | --- | --- | --- |
| 184 | 12.4 | **Create 1.3 release branch in CVS** |  | 1d | 2008-07-17 | 2008-07-17 |  | 71d |  |  | 12h |
| 185 | 12.4.1 | Start | milestone | 0d | 2008-07-17 | 2008-07-17 |  | 71d | 0d |  |  |
| 186 | 12.4.2 | Update project versions |  | 1d | 2008-07-17 | 2008-07-17 | 185 | 71d | 0d | Scott Oster [50%] | 4h |
| 187 | 12.4.3 | update eclipse projects |  | 1d | 2008-07-17 | 2008-07-17 | 185 | 93d | 0d | Scott Oster [50%] | 4h |
| 188 | 12.4.4 | remove any projects which wont be released in 1.3 |  | 1d | 2008-07-17 | 2008-07-17 | 185 | 93d | 0d | Scott Oster [50%] | 4h |
| 189 | 12.4.5 | Finish | milestone | 0d | 2008-07-17 | 2008-07-17 | 186, 187, 188 | 93d |  |  |  |
| 190 | 12.5 | Update LICENSE |  | 1d? | 2008-07-17 | 2008-07-17 | 181 | 82.5d | 66d | John Eisenschmidt | 8h |
| 191 | 12.6 | **Update core caGrid Services using Introduce 1.3** |  | 1d? | 2008-10-16 | 2008-10-17 | 131, 186 | 6d | 0d | Shannon Hastings [80%]; Steve Langella [80%]; Scott Oster [50%]; David Ervin [80%] | 23.2h |
| 192 | 12.6.1 | Start | milestone | 0d | 2008-10-16 | 2008-10-16 |  | 7d |  |  |  |
| 193 | 12.6.2 | Dorian |  | 1d? | 2008-10-17 | 2008-10-17 |  | 6d | 0d |  |  |
| 194 | 12.6.3 | Authentication Service |  | 1d? | 2008-10-17 | 2008-10-17 |  | 6d | 0d |  |  |
| 195 | 12.6.4 | GTS Master |  | 1d? | 2008-10-17 | 2008-10-17 |  | 6d | 0d |  |  |
| 196 | 12.6.5 | GTS Slave |  | 1d? | 2008-10-17 | 2008-10-17 |  | 6d | 0d |  |  |
| 197 | 12.6.6 | CDS |  | 1d? | 2008-10-17 | 2008-10-17 |  | 6d | 0d |  |  |
| 198 | 12.6.7 | Grouper |  | 1d? | 2008-10-17 | 2008-10-17 |  | 6d | 0d |  |  |
| 199 | 12.6.8 | GME |  | 1d? | 2008-10-17 | 2008-10-17 |  | 6d | 0d |  |  |
| 200 | 12.6.9 | FQP |  | 1d? | 2008-10-17 | 2008-10-17 |  | 6d | 0d |  |  |
| 201 | 12.6.10 | Workflow |  | 1d? | 2008-10-17 | 2008-10-17 |  | 6d | 0d |  |  |
| 202 | 12.6.11 | Finish | milestone | 0d | 2008-10-17 | 2008-10-17 | 193, 194, 195, 196, 197, 198, 199, 200, 201 | 6d |  |  |  |
| 203 | 12.7 | Validate core services' metadata |  | 2d? | 2008-07-17 | 2008-07-18 | 181 | 91d | 74.5d | Shannon Hastings [80%]; Steve Langella [80%]; Scott Oster [50%]; David Ervin [80%] | 23.2h |
| 204 | 12.8 | publish release IVY repositories |  | 3d? | 2008-07-18 | 2008-07-22 | 181 | 89d | 72.5d | Scott Oster [50%] | 12h |
| 205 | 12.9 | create installer release |  | 2d? | 2008-10-20 | 2008-10-21 | 190, 191 | 16.5d | 0d | Scott Oster [50%] | 8h |
| 206 | 12.10 | post installer properties file to FTP site |  | 2d? | 2008-07-17 | 2008-07-18 | 181 | 92d |  | Scott Oster [50%]; Systems | 12h |
| 207 | 12.11 | create gforge release |  | 2d? | 2008-07-18 | 2008-07-21 | 181 | 90d | 73.5d | Scott Oster [50%] | 8h |
| 208 | 12.12 | Write Deployment Instructions |  | 1.92d? | 2008-07-18 | 2008-07-21 | 181 | 91.08d |  | Steve Langella [80%]; Scott Oster [50%] | 20h |
| 209 | 12.13 | Redeploy QA Grid |  | 2.5d? | 2008-10-22 | 2008-10-24 | 205 | 16.5d | 0d | Quality Assurance | 20h |
| 210 | 12.14 | Redeploy Training Grid |  | 1.92d? | 2008-10-22 | 2008-10-23 | 205 | 22.08d | 5.58d | Steve Langella [80%]; Scott Oster [50%] | 20h |
| 211 | 12.15 | Redeploy Staging Grid |  | 2.5d? | 2008-10-24 | 2008-10-28 | 209 | 16.5d | 0d | Systems | 20h |
| 212 | 12.16 | Redeploy Production Grid |  | 2.5d? | 2008-10-29 | 2008-10-31 | 211 | 16.5d | 0d | Systems | 20h |
| 213 | 12.17 | Update Zope / Plome |  | 1d? | 2008-07-17 | 2008-07-17 | 181 | 92d | 75.5d | John Eisenschmidt | 8h |
| 214 | 12.18 | Update gforge |  | 1d? | 2008-07-17 | 2008-07-17 | 181 | 92d | 75.5d | John Eisenschmidt | 8h |
| 215 | 12.19 | Send Release Announcement |  | 1d? | 2008-10-31 | 2008-11-03 | 212, 213, 214, 210, 207, 203, 204 | 16.5d | 0d | John Eisenschmidt | 8h |
| 216 | 12.20 | Finish | milestone | 0d | 2008-11-03 | 2008-11-03 | 215 | 16.5d |  |  |  |

Notes:
- 210: In the past, we have deployed the training grid before other tiers, as we develop the deployment process document in doing so
